# COMPONEN TECH

Schedule from MS Project, 2020-04-01 to 2021-02-17, costs in $, A marks actual dates.

## Calendars

- Estandar: Mon-Fri 08:00-12:00, 13:00-17:00; Sat-Sun off.

## Resources

| Resource | Rate |
| --- | --- |
| No Asignado |  |
| Computador 1 | 1600 |
| Computador 2 | 1600 |
| Computador 3 | 1600 |
| Computador 4 | 1600 |
| Yeren Palacios | 6148 |
| Jhon Monroy | 6148 |
| Kevin Cendales | 6148 |
| Marlon Jaramillo | 6148 |
| Electricidad | 800 |
| Internet | 1600 |
| Servidor | 1500 |
| Seguridad web | 1300 |

## Schedule

| ID | WBS | Task | Type | Duration | Start | Finish | Complete | Remaining | Total slack | Constraint | Resources | Work | Actual work | Cost | Actual cost |
| --- | --- | --- | --- | --- | --- | --- | --- | --- | --- | --- | --- | --- | --- | --- | --- |
| 1 | 1 | **ANALISIS** |  | 51d? | 2020-04-21 A | 2020-06-30 A | 100% |  |  |  | Computador 1; Computador 2; Computador 3; Computador 4; Jhon Monroy; Kevin Cendales; Marlon Jaramillo; Yeren Palacios | 1632h | 1632h | 10,039,936 | 10,039,936 |
| 2 | 1.1 | Componente metodológico |  | 7d | 2020-04-21 A | 2020-04-30 A | 100% |  |  | finish no earlier than 2020-04-30 |  |  |  |  |  |
| 3 | 1.2 | tecnicas de levantamiento de fm |  | 5d? | 2020-05-04 A | 2020-05-08 A | 100% |  |  | start no earlier than 2020-05-04 |  |  |  |  |  |
| 4 | 1.3 | mapa de procesos |  | 5d? | 2020-05-11 A | 2020-05-15 A | 100% |  |  | start no earlier than 2020-05-11 |  |  |  |  |  |
| 5 | 1.4 | control de versiones |  | 3d? | 2020-05-18 A | 2020-05-20 A | 100% |  |  | start no earlier than 2020-05-18 |  |  |  |  |  |
| 6 | 1.5 | requerimientos |  | 4d? | 2020-06-01 A | 2020-06-04 A | 100% |  |  | start no earlier than 2020-06-01 |  |  |  |  |  |
| 7 | 1.6 | casos de uso |  | 7d? | 2020-06-22 A | 2020-06-30 A | 100% |  |  | start no earlier than 2020-06-22 |  |  |  |  |  |
| 8 | 2 | **diseño** |  | 65d? | 2020-07-06 A | 2020-10-02 A | 100% |  |  | start no earlier than 2020-07-03 | Computador 1; Computador 2; Computador 3; Computador 4; Jhon Monroy; Kevin Cendales; Marlon Jaramillo; Yeren Palacios | 2080h | 2080h | 12,794,240 | 12,794,240 |
| 9 | 2.1 | modelo entidad relacion |  | 5d? | 2020-07-06 A | 2020-07-10 A | 100% |  |  | start no earlier than 2020-07-06 |  |  |  |  |  |
| 10 | 2.2 | diccionario de datos |  | 5d? | 2020-07-13 A | 2020-07-17 A | 100% |  |  | start no earlier than 2020-07-13 |  |  |  |  |  |
| 11 | 2.3 | MER |  | 5d? | 2020-07-20 A | 2020-07-24 A | 100% |  |  | start no earlier than 2020-07-20 |  |  |  |  |  |
| 12 | 2.4 | cronograma |  | 5d? | 2020-07-27 A | 2020-07-31 A | 100% |  |  | start no earlier than 2020-07-27 |  |  |  |  |  |
| 13 | 2.5 | diagrama de distribuccion |  | 2d | 2020-08-10 A | 2020-08-11 A | 100% |  |  | start no earlier than 2020-08-10 |  |  |  |  |  |
| 14 | 2.6 | diagrama de clases |  | 6d? | 2020-08-24 A | 2020-08-31 A | 100% |  |  | start no earlier than 2020-08-24 |  |  |  |  |  |
| 15 | 2.7 | prototipo |  | 11d? | 2020-09-01 A | 2020-09-15 A | 100% |  |  | start no earlier than 2020-09-01 |  |  |  |  |  |
| 16 | 2.8 | normalizacion del modelo entidad |  | 2d | 2020-10-01 A | 2020-10-02 A | 100% |  |  | start no earlier than 2020-10-01 |  |  |  |  |  |
| 17 | 3 | **DESARROLLO** |  | 72d? | 2020-10-19 A | 2021-01-26 | 80% | 14.73d? | 16d | start no earlier than 2020-10-12 | Computador 1; Computador 2; Computador 3; Computador 4; Jhon Monroy; Kevin Cendales; Marlon Jaramillo; Yeren Palacios | 2304h | 1832.73h | 14,171,392 | 11,267,603.55 |
| 18 | 3.1 | contruccion de bd |  | 5d | 2020-10-19 A | 2020-10-23 A | 100% |  |  | start no earlier than 2020-10-19 |  |  |  |  |  |
| 19 | 3.2 | consultas de bd |  | 3d? | 2020-11-02 A | 2020-11-04 | 50% | 1.5d? | 75d | start no earlier than 2020-11-02 |  |  |  |  |  |
| 20 | 3.3 | prototipo no funcional |  | 10d | 2020-11-23 A | 2020-12-04 | 75% | 2.5d | 53d | start no earlier than 2020-11-23 |  |  |  |  |  |
| 21 | 3.4 | inventario |  | 2d? | 2021-01-04 A | 2021-01-05 A | 100% |  |  | start no earlier than 2021-01-04 |  |  |  |  |  |
| 22 | 3.5 | informe de costos |  | 2d? | 2021-01-25 A | 2021-01-26 | 75% | 0.5d? | 16d | start no earlier than 2021-01-25 |  |  |  |  |  |
| 23 | 4 | **Pruebas** |  | 13d? | 2021-02-01 A | 2021-02-17 | 71% | 3.71d? | 0d | start no earlier than 2021-02-01 |  |  |  |  |  |
| 24 | 4.1 | pruebas caja negra y blanca |  | 4d? | 2021-02-01 A | 2021-02-04 A | 100% |  |  | start no earlier than 2021-02-01 |  |  |  |  |  |
| 25 | 4.2 | manual de instalacion |  | 3d? | 2021-02-08 A | 2021-02-10 A | 100% |  |  | start no earlier than 2021-02-08 |  |  |  |  |  |
| 26 | 4.3 | pruebas unitarias |  | 3d? | 2021-02-15 A | 2021-02-17 A | 100% |  |  | start no earlier than 2021-02-15 |  |  |  |  |  |
| 27 | 4.4 | Manual tecnico | manual | 1d? | 2021-02-01 | 2021-02-01 |  |  |  |  |  |  |  |  |  |
| 28 | 4.5 | Diagrama de distribución | manual | 1d? | 2021-02-01 | 2021-02-01 |  |  |  |  |  |  |  |  |  |
| 29 | 4.6 | Informe de migración | manual | 1d? | 2021-02-01 | 2021-02-01 |  |  |  |  |  |  |  |  |  |
| 30 | 4.7 | Plan de instalación | manual | 1d? | 2021-02-01 | 2021-02-01 |  |  |  |  |  |  |  |  |  |

| ID | WBS | Task | Type | Duration | Start | Finish |
| --- | --- | --- | --- | --- | --- | --- |
| 31 | 5 | **Implementación** |  | 1d? | 2020-04-01 | 2020-04-01 |
| 32 | 5.1 | Cuadro comparativo de proveedores | manual | 1d? | 2020-04-01 | 2020-04-01 |
| 33 | 5.2 | Contrato de desarrollo de software | manual | 1d? | 2020-04-01 | 2020-04-01 |
| 34 | 5.3 | Documentación de las pruebas | manual | 1d? | 2020-04-01 | 2020-04-01 |
| 35 | 5.4 | Modelo de calidad | manual | 1d? | 2020-04-01 | 2020-04-01 |
| 36 | 5.5 | Manual de usuario | manual | 1d? | 2020-04-01 | 2020-04-01 |
| 37 | 5.6 | Manual de operación | manual | 1d? | 2020-04-01 | 2020-04-01 |
